# Implementatieplan Ewals:Globis

Schedule from MS Project XML, 2017-05-18 to 2020-03-13, costs in €.

## Calendars

- Standard: Mon-Fri 08:00-12:00, 13:00-17:00; Sat-Sun off. Exceptions (off unless hours are given): 2017-07-01 08:00-12:00 (Summer 2017).

## Resources

| Resource | Rate |
| --- | --- |
| Project Manager | 99 |
| Solution Architect | 118.13 |
| Sr. Business Analyst | 118.13 |
| Technical Analyst | 99 |
| Dev Management | 67.5 |
| Development | 56.25 |
| Lead Project Consultant | 99 |
| Technical Consultant | 76.5 |

## Schedule

| ID | WBS | Task | Type | Duration | Start | Finish | Predecessors | Total slack | Free slack | Constraint | Deadline | Resources | Work | Cost |
| --- | --- | --- | --- | --- | --- | --- | --- | --- | --- | --- | --- | --- | --- | --- |
| 1 | 1 | **Realisatie** |  | 737.5d? | 2017-05-18 | 2020-03-13 |  | 0d |  |  |  |  | 15030.4h | 993,180 |
| 2 | 1.1 | **FASE 1** |  | 266.3d? | 2017-05-18 | 2018-05-24 |  | 32.5d |  |  |  |  | 6244.8h | 411,456 |
| 3 | 1.1.1 | **Framework Security (Active directory) - 41** |  | 18.5d | 2017-08-18 | 2017-09-13 |  | 652.5d |  |  |  |  | 76h | 5,121 |
| 4 | 1.1.1.1 | Use Case & data samples delivered: Ewals (& GLOBIS?) |  | 10d | 2017-08-18 | 2017-09-01 | 5SF | 661d |  |  |  |  |  |  |
| 5 | 1.1.1.2 | Technical Design |  | 1d | 2017-09-01 | 2017-09-01 |  | 652.5d | 0d | start no earlier than 2017-09-01 |  | Technical Analyst | 8h | 792 |
| 6 | 1.1.1.3 | Development |  | 6.5d | 2017-09-04 | 2017-09-12 | 5 | 652.5d | 0d |  |  | Development | 52h | 2,925 |
| 7 | 1.1.1.4 | Implementatie & testing |  | 1d | 2017-09-12 | 2017-09-13 | 6 | 652.5d |  |  |  | Lead Project Consultant; Technical Consultant | 16h | 1,404 |
| 8 | 1.1.2 | **Technical High Availability - 46** |  | 147d? | 2017-06-01 | 2017-12-22 |  | 142.5d |  |  |  |  | 208h | 11,700 |
| 9 | 1.1.2.1 | Poc High Availability + demo |  | 4.5d? | 2017-09-11 | 2017-09-15 |  | 650.5d |  | finish no earlier than 2017-09-15 |  |  |  |  |
| 10 | 1.1.2.2 | Development |  | 147d | 2017-06-01 | 2017-12-22 |  | 580.5d |  | finish no earlier than 2017-12-22 |  | Development | 208h | 11,700 |
| 11 | 1.1.2.3 | Approved High Availability | milestone | 0.5d? | 2017-12-18 | 2017-12-18 |  | 0d |  | finish no earlier than 2017-12-18 | 2017-12-18 |  |  |  |
| 12 | 2.1 | **Datamodel** |  | 231.5d? | 2017-05-19 | 2018-04-06 |  | 150.5d | 15d |  |  |  | 1260h | 85,413 |
| 13 | 1.1.3.1 | **Masterdata / Data migratie .. - 53** |  | 43.5d | 2017-08-16 | 2017-10-16 |  | 629.5d |  |  |  |  | 24h | 2,376 |
| 14 | 1.1.3.1.1 | Delivery data specs to Ewals |  | 10d | 2017-10-02 | 2017-10-16 | 46 | 629.5d |  | finish no earlier than 2017-10-16 |  |  |  |  |
| 15 | 1.1.3.1.2 | Technical Design |  | 40.5d | 2017-08-16 | 2017-10-16 |  | 629.5d |  | start no earlier than 2017-08-16 |  | Technical Analyst | 24h | 2,376 |
| 16 | 1.1.3.2 | **Technical Bi - 51** |  | 6.5d | 2018-01-02 | 2018-01-10 |  | 567.5d |  |  |  |  | 52h | 2,925 |
| 17 | 1.1.3.2.1 | Development |  | 6.5d | 2018-01-02 | 2018-01-10 |  | 567.5d |  | start no earlier than 2018-01-02 |  | Development | 52h | 2,925 |
| 18 | 1.1.3.3 | **Technical Gui & NG client (zelfde module andere data) - 52** |  | 0d | 2017-12-15 | 2017-12-15 |  |  |  |  |  |  |  |  |
| 19 | 1.1.3.3.1 | Technical Design | milestone, manual | 0d | 2017-12-15 | 2017-12-15 |  |  |  |  |  | Technical Analyst |  |  |
| 20 | 1.1.3.3.2 | Development | milestone, manual | 0d | 2017-12-15 | 2017-12-15 |  |  |  |  |  | Development |  |  |
| 21 | 1.1.3.3.3 | Implementatie & testing | milestone, manual | 0d | 2017-12-15 | 2017-12-15 |  |  |  |  |  | Lead Project Consultant; Technical Consultant |  |  |
| 22 | 1.1.3.4 | **Masterdata Zone logica - 2** |  | 35d | 2017-06-22 | 2017-08-09 |  | 677d |  |  |  |  | 220h | 14,661 |
| 23 | 1.1.3.4.1 | Use Case & data samples delivered: Ewals (& GLOBIS?) |  | 10d | 2017-06-22 | 2017-07-06 | 24SF | 702d |  |  |  |  |  |  |
| 24 | 1.1.3.4.2 | Technical Design |  | 3d | 2017-07-06 | 2017-07-10 |  | 677d | 0d | start no earlier than 2017-07-03 |  | Technical Analyst | 24h | 2,376 |
| 25 | 1.1.3.4.3 | Development |  | 19.5d | 2017-07-11 | 2017-08-07 | 24 | 677d | 0d |  |  | Development | 156h | 8,775 |
| 26 | 1.1.3.4.4 | Implementatie & testing |  | 2.5d | 2017-08-07 | 2017-08-09 | 25 | 677d |  |  |  | Lead Project Consultant; Technical Consultant | 40h | 3,510 |

Notes:
- 13: Uitleggen aan Ewals wat moet gebeuren voor datamigratie. Af te spreken met Ewals. Stijn. Afspreken hoe en tegen wanneer data mag verwacht worden.
- 14: GLOBIS levert how to aan zodat Ewals dit zelf kan importeren. Dit zal in meerdere delen komen, volgens de afgewerkte datamodel-delen. Ten laatste tegen half oktober klaar verwacht, eerste midden augustus verwacht.

| ID | WBS | Task | Type | Duration | Start | Finish | Predecessors | Total slack | Free slack | Constraint | Resources | Work | Cost |
| --- | --- | --- | --- | --- | --- | --- | --- | --- | --- | --- | --- | --- | --- |
| 27 | 1.1.3.5 | **Masterdata Branch / department model - 3** |  | 39.5d | 2017-06-27 | 2017-08-21 |  | 669.5d |  |  |  | 236h | 16,245 |
| 28 | 1.1.3.5.1 | Use Case & data samples delivered: Ewals (& GLOBIS?) |  | 10d | 2017-06-27 | 2017-07-11 | 29SF | 699d |  |  |  |  |  |
| 29 | 1.1.3.5.2 | Technical Design |  | 5d | 2017-07-11 | 2017-07-17 |  | 669.5d | 0d | start no earlier than 2017-07-10 | Technical Analyst | 40h | 3,960 |
| 30 | 1.1.3.5.3 | Development |  | 19.5d | 2017-07-18 | 2017-08-14 | 29 | 669.5d | 0d |  | Development | 156h | 8,775 |
| 31 | 1.1.3.5.4 | Implementatie & testing |  | 2.5d | 2017-08-14 | 2017-08-21 | 30 | 669.5d |  |  | Lead Project Consultant; Technical Consultant | 40h | 3,510 |
| 32 | 1.1.3.6 | **Model consignments / trips - 4** |  | 44.5d | 2017-07-04 | 2017-09-04 |  | 659.5d |  |  |  | 304h | 20,574 |
| 33 | 1.1.3.6.1 | Use Case & data samples delivered: Ewals (& GLOBIS?) |  | 10d | 2017-07-04 | 2017-07-18 | 34SF | 694d |  |  |  |  |  |
| 34 | 1.1.3.6.2 | Technical Design |  | 5d | 2017-07-18 | 2017-07-24 |  | 659.5d | 0d | start no earlier than 2017-07-10 | Technical Analyst | 40h | 3,960 |
| 35 | 1.1.3.6.3 | Development |  | 26d | 2017-07-25 | 2017-08-29 | 34 | 659.5d | 0d |  | Development | 208h | 11,700 |
| 36 | 1.1.3.6.4 | Implementatie & testing |  | 3.5d | 2017-08-30 | 2017-09-04 | 35 | 659.5d |  |  | Lead Project Consultant; Technical Consultant | 56h | 4,914 |
| 37 | 1.1.3.7 | **Model pricing (rate manual/mgt) - 6** |  | 25.5d | 2017-07-14 | 2017-08-18 |  | 670.5d |  |  |  | 136h | 9,432 |
| 38 | 1.1.3.7.1 | Use Case & data samples delivered: Ewals (& GLOBIS?) |  | 10d | 2017-07-14 | 2017-07-28 | 39SF | 686d |  |  |  |  |  |
| 39 | 1.1.3.7.2 | Technical Design |  | 3d | 2017-07-28 | 2017-08-01 |  | 670.5d | 0d | start no earlier than 2017-07-24 | Technical Analyst | 24h | 2,376 |
| 40 | 1.1.3.7.3 | Development |  | 11d | 2017-08-02 | 2017-08-16 | 39 | 670.5d | 0d |  | Development | 88h | 4,950 |
| 41 | 1.1.3.7.4 | Implementatie & testing |  | 1.5d | 2017-08-17 | 2017-08-18 | 40 | 670.5d |  |  | Lead Project Consultant; Technical Consultant | 24h | 2,106 |
| 42 | 1.1.3.8 | **Masterdata Business relation model - 1** |  | 74.5d | 2017-06-19 | 2017-09-29 |  | 640.5d |  |  |  | 288h | 19,200 |
| 43 | 1.1.3.8.1 | Use Case & data samples delivered: Ewals (& GLOBIS?) |  | 10d | 2017-06-19 | 2017-07-03 | 44SF | 705d |  |  |  |  |  |
| 44 | 1.1.3.8.2 | Technical Design |  | 3d | 2017-07-03 | 2017-07-05 |  | 631.33d | 0d | start no earlier than 2017-07-03 | Technical Analyst | 24h | 2,376 |
| 45 | 1.1.3.8.3 | Development |  | 52d | 2017-07-06 | 2017-09-15 | 44 | 631.33d | 0.83d | finish no earlier than 2017-09-15 | Development | 208h | 11,700 |
| 46 | 1.1.3.8.4 | Implementatie & testing |  | 7d | 2017-09-18 | 2017-09-29 | 45 | 630.5d | 1d | finish no earlier than 2017-09-29 | Lead Project Consultant; Technical Consultant | 56h | 5,124 |
| 47 | 2.1.1 | **Clean-up of masterdata** |  | 231.5d? | 2017-05-19 | 2018-04-06 |  | 505d |  |  |  |  |  |
| 48 | 2.1.1.1 | Analysis masterdata |  | 2mo | 2017-05-19 | 2017-07-13 |  | 696.5d |  |  |  |  |  |
| 49 | 2.1.1.2 | Create Data conversion script |  | 1d? | 2017-05-19 | 2017-05-19 |  | 735.5d |  |  |  |  |  |
| 50 | 2.1.1.3 | Training How to check your MD |  | 3.73w | 2017-09-04 | 2017-09-28 |  | 641.33d |  | start no earlier than 2017-09-04 |  |  |  |
| 51 | 2.1.1.4 | Clean-up completed | milestone | 0d | 2018-03-31 | 2018-03-31 |  | 510d |  | start no earlier than 2018-03-31 |  |  |  |
| 52 | 2.1.2 | Converting masterdata |  | 1w | 2018-04-02 | 2018-04-06 |  | 505d |  | start no earlier than 2018-04-01 |  |  |  |
| 53 | 2.1.3 | Representative dataset delivered to Globis | milestone | 0d | 2018-01-01 | 2018-01-01 |  | 575d |  | start no earlier than 2018-01-01 |  |  |  |
| 54 | 2.1.4 | Masterdata imported | milestone | 0d | 2017-11-01 | 2017-11-01 |  | 618d |  | start no earlier than 2017-11-01 |  |  |  |

Notes:
- 48: Ewals
- 49: Ewals
- 50: Ewals
- 51: Ewals intern
- 53: Ewals
- 54: GLOBIS levert how to aan zodat Ewals dit zelf kan importeren

| ID | WBS | Task | Type | Duration | Start | Finish | Predecessors | Total slack | Free slack | Constraint | Resources | Work | Cost |
| --- | --- | --- | --- | --- | --- | --- | --- | --- | --- | --- | --- | --- | --- |
| 55 | 1.1.4 | **Contract Structure** |  | 161.5d | 2017-05-18 | 2017-12-28 |  | 576d | 86d |  |  | 456h | 30,906 |
| 56 | 1.1.4.1 | **Create Contract Structure** |  | 116d | 2017-05-18 | 2017-10-26 |  | 601.5d |  |  |  | 456h | 30,906 |
| 57 | 1.1.4.1.1 | **Model contracts - 5** |  | 27.5d | 2017-05-18 | 2017-06-26 |  | 690d | 114d |  |  | 152h | 10,332 |
| 58 | 1.1.4.1.1.1 | Use Case & data samples delivered: Ewals (& GLOBIS?) |  | 10d | 2017-05-18 | 2017-06-01 | 59SF | 707.5d |  |  |  |  |  |
| 59 | 1.1.4.1.1.2 | Technical Design |  | 3d | 2017-06-01 | 2017-06-05 |  | 690d | 0d | start no earlier than 2017-06-01 | Technical Analyst | 24h | 2,376 |
| 60 | 1.1.4.1.1.3 | Development |  | 13d | 2017-06-06 | 2017-06-22 | 59 | 690d | 0d |  | Development | 104h | 5,850 |
| 61 | 1.1.4.1.1.4 | Implementatie & testing |  | 1.5d | 2017-06-23 | 2017-06-26 | 60 | 690d |  | start no earlier than 2017-06-21 | Lead Project Consultant; Technical Consultant | 24h | 2,106 |
| 62 | 1.1.4.1.2 | **Contract structuur customer - 14 & Contract structuur supplier - 15** |  | 44.5d | 2017-08-25 | 2017-10-26 |  | 601.5d | 25.5d |  |  | 304h | 20,574 |
| 63 | 1.1.4.1.2.1 | Use Case & data samples delivered: Ewals (& GLOBIS?) |  | 10d | 2017-08-25 | 2017-09-08 | 64SF | 636d |  |  |  |  |  |
| 64 | 1.1.4.1.2.2 | Technical Design |  | 5d | 2017-09-08 | 2017-09-14 |  | 601.5d | 0d | start no earlier than 2017-09-04 | Technical Analyst | 40h | 3,960 |
| 65 | 1.1.4.1.2.3 | Development |  | 26d | 2017-09-15 | 2017-10-20 | 64 | 601.5d | 0d |  | Development | 208h | 11,700 |
| 66 | 1.1.4.1.2.4 | Implementatie & testing |  | 3.5d | 2017-10-23 | 2017-10-26 | 65 | 601.5d |  |  | Lead Project Consultant; Technical Consultant | 56h | 4,914 |
| 67 | 2.2 | Contract Structure ready | milestone | 0d | 2017-12-01 | 2017-12-01 | 62, 57 | 576d | 0d | start no earlier than 2017-12-01 |  |  |  |
| 68 | 1.1.4.3 | Refine Contract Structure |  | 20d | 2017-12-01 | 2017-12-28 | 67 | 576d |  |  |  |  |  |
| 69 | 1.1.5 | **CRM/SRM** |  | 96d? | 2017-09-18 | 2018-01-29 |  | 554d | 64d |  |  | 304h | 20,574 |
| 70 | 1.1.5.1 | **Create CRM/SRM** |  | 44.5d | 2017-09-18 | 2017-11-17 |  | 585.5d | 30.5d |  |  | 304h | 20,574 |
| 71 | 1.1.5.1.1 | **Customer relation management (CRM) - 12 & Supplier relation management (SRM) - 13** |  | 44.5d | 2017-09-18 | 2017-11-17 |  | 585.5d | 30.5d |  |  | 304h | 20,574 |
| 72 | 1.1.5.1.1.1 | Use Case & data samples delivered: Ewals (& GLOBIS?) |  | 10d | 2017-09-18 | 2017-10-02 | 73SF | 620d |  |  |  |  |  |
| 73 | 1.1.5.1.1.2 | Technical Design |  | 5d | 2017-10-02 | 2017-10-06 |  | 585.5d | 0d | start no earlier than 2017-10-02 | Technical Analyst | 40h | 3,960 |
| 74 | 1.1.5.1.1.3 | Development |  | 26d | 2017-10-09 | 2017-11-13 | 73 | 585.5d | 0d |  | Development | 208h | 11,700 |
| 75 | 1.1.5.1.1.4 | Implementatie & testing |  | 3.5d | 2017-11-14 | 2017-11-17 | 74 | 585.5d |  |  | Lead Project Consultant; Technical Consultant | 56h | 4,914 |
| 76 | 2.3 | CRM/SRM ready | milestone | 0d | 2018-01-01 | 2018-01-01 | 70, 71 | 555d | 1d | start no earlier than 2018-01-01 |  |  |  |
| 77 | 1.1.5.3 | Refine CRM/SRM |  | 20d? | 2018-01-02 | 2018-01-29 | 76 | 554d |  | start no earlier than 2018-01-02 |  |  |  |
| 78 | 2.4 | Training CRM/SRM and Financial plan? Ewals |  | 4w | 2018-03-02 | 2018-03-29 | 87 | 511d |  | start no earlier than 2018-03-02 |  |  |  |

| ID | WBS | Task | Type | Duration | Start | Finish | Predecessors | Total slack | Free slack | Constraint | Resources | Work | Cost |
| --- | --- | --- | --- | --- | --- | --- | --- | --- | --- | --- | --- | --- | --- |
| 79 | 1.1.7 | **Financial plan** |  | 113d? | 2017-09-25 | 2018-02-28 |  | 512d | 42d |  |  | 600h | 40,446 |
| 80 | 1.1.7.1 | **Create Financial Plan** |  | 78.5d | 2017-09-25 | 2018-01-11 |  | 526.5d | 76.5d |  |  | 600h | 40,446 |
| 81 | 1.1.7.1.1 | **Financieel plan basis (manueel voeden + workflows) vervanging PALO - 18** |  | 78.5d | 2017-09-25 | 2018-01-11 |  | 526.5d | 14.5d |  |  | 600h | 40,446 |
| 82 | 1.1.7.1.1.1 | Use Case & data samples delivered: Ewals (& GLOBIS?) |  | 10d | 2017-09-25 | 2017-10-09 | 83SF | 595d |  |  |  |  |  |
| 83 | 1.1.7.1.1.2 | Technical Design |  | 10d | 2017-10-09 | 2017-10-20 |  | 526.5d | 0d | start no earlier than 2017-10-02 | Technical Analyst | 80h | 7,920 |
| 84 | 1.1.7.1.1.3 | Development |  | 52d | 2017-10-23 | 2018-01-02 | 83 | 526.5d | 0d |  | Development | 416h | 23,400 |
| 85 | 1.1.7.1.1.4 | Implementatie & testing |  | 6.5d | 2018-01-03 | 2018-01-11 | 84 | 526.5d |  |  | Lead Project Consultant; Technical Consultant | 104h | 9,126 |
| 86 | 2.5 | Financial plan ready | milestone | 0d | 2018-02-01 | 2018-02-01 | 81 | 512d | 0d | start no earlier than 2018-02-01 |  |  |  |
| 87 | 1.1.7.3 | Refine Financial Plan |  | 20d? | 2018-02-01 | 2018-02-28 | 86 | 512d | 1d |  |  |  |  |
| 88 | 1.1.8 | **Technical printing - 48** |  | 19.5d | 2017-11-02 | 2017-11-29 |  | 597.5d |  |  |  | 168h | 11,916 |
| 89 | 1.1.8.1 | Technical Design |  | 5d | 2017-11-02 | 2017-11-08 |  | 597.5d | 0d | start no earlier than 2017-11-02 | Technical Analyst | 40h | 3,960 |
| 90 | 1.1.8.2 | Development |  | 13d | 2017-11-09 | 2017-11-27 | 89 | 597.5d | 0d |  | Development | 104h | 5,850 |
| 91 | 1.1.8.3 | Implementatie & testing |  | 1.5d | 2017-11-28 | 2017-11-29 | 90 | 597.5d |  |  | Lead Project Consultant; Technical Consultant | 24h | 2,106 |
| 92 | 1.1.9 | **Technical Iplan (CSD) 50** |  | 151.5d | 2017-05-19 | 2017-12-15 |  | 585d |  |  |  | 68h | 4,419 |
| 93 | 1.1.9.1 | ? Use Case & data samples delivered: Ewals (& GLOBIS?) |  | 10d | 2017-05-19 | 2017-06-01 |  | 726.5d |  |  |  |  |  |
| 94 | 1.1.9.2 | Technical Design |  | 1d | 2017-12-06 | 2017-12-06 |  | 585d | 0d | start no earlier than 2017-12-01 | Technical Analyst | 8h | 792 |
| 95 | 1.1.9.3 | Development |  | 6.5d | 2017-12-07 | 2017-12-15 | 94 | 585d | 0d |  | Development | 52h | 2,925 |
| 96 | 1.1.9.4 | Implementatie & testing |  | 0.5d | 2017-12-15 | 2017-12-15 | 95 | 585d |  |  | Lead Project Consultant; Technical Consultant | 8h | 702 |
| 97 | 1.1.10 | **Rate Manual (GlobSim part 1)** |  | 178d? | 2017-07-24 | 2018-03-28 |  | 512d | 22d |  |  | 1068h | 70,137 |
| 98 | 1.1.10.1 | **Create Rate Manual** |  | 134.5d | 2017-07-24 | 2018-01-26 |  | 535.5d | 23.5d |  |  | 1068h | 70,137 |
| 99 | 1.1.10.1.1 | **Distances - Ptv - 9** |  | 20.5d | 2017-11-17 | 2017-12-15 |  | 565.5d | 53.5d |  |  | 92h | 6,705 |
| 100 | 1.1.10.1.1.1 | Use Case & data samples delivered: Ewals (& GLOBIS?) |  | 10d | 2017-11-17 | 2017-12-01 | 101SF | 576d |  |  |  |  |  |
| 101 | 1.1.10.1.1.2 | Technical Design |  | 3d | 2017-12-01 | 2017-12-05 | 157 | 565.5d | 0d | start no earlier than 2017-12-01 | Technical Analyst | 24h | 2,376 |
| 102 | 1.1.10.1.1.3 | Development |  | 6.5d | 2017-12-06 | 2017-12-14 | 101 | 565.5d | 0d |  | Development | 52h | 2,925 |
| 103 | 1.1.10.1.1.4 | Implementatie & testing |  | 1d | 2017-12-14 | 2017-12-15 | 102 | 565.5d |  |  | Lead Project Consultant; Technical Consultant | 16h | 1,404 |

| ID | WBS | Task | Type | Duration | Start | Finish | Predecessors | Total slack | Free slack | Constraint | Resources | Work | Cost |
| --- | --- | --- | --- | --- | --- | --- | --- | --- | --- | --- | --- | --- | --- |
| 104 | 1.1.10.1.2 | **Sales rate calculation (Globsim basis) - 10** |  | 71.5d | 2017-10-19 | 2018-01-26 |  | 535.5d | 23.5d |  |  | 544h | 34,902 |
| 105 | 1.1.10.1.2.1 | Use Case & data samples delivered: Ewals (& GLOBIS?) |  | 10d | 2017-10-19 | 2017-11-02 | 106SF | 597d |  |  |  |  |  |
| 106 | 1.1.10.1.2.2 | Technical Design |  | 3d | 2017-11-02 | 2017-11-06 |  | 535.5d | 0d | start no earlier than 2017-11-02 | Technical Analyst | 24h | 2,376 |
| 107 | 1.1.10.1.2.3 | Development |  | 52d | 2017-11-07 | 2018-01-17 | 106 | 535.5d | 0d |  | Development | 416h | 23,400 |
| 108 | 1.1.10.1.2.4 | Implementatie & testing |  | 6.5d | 2018-01-18 | 2018-01-26 | 107 | 535.5d |  |  | Lead Project Consultant; Technical Consultant | 104h | 9,126 |
| 109 | 1.1.10.1.3 | **Rate manual - 7** |  | 59d | 2017-07-24 | 2017-10-12 |  | 611d | 99d |  |  | 432h | 28,530 |
| 110 | 1.1.10.1.3.1 | Use Case & data samples delivered: Ewals (& GLOBIS?) |  | 10d | 2017-07-24 | 2017-08-07 | 111SF | 660d |  |  |  |  |  |
| 111 | 1.1.10.1.3.2 | Technical Design |  | 5d | 2017-08-07 | 2017-08-11 |  | 611d | 0d | start no earlier than 2017-08-07 | Technical Analyst | 40h | 3,960 |
| 112 | 1.1.10.1.3.3 | Development |  | 39d | 2017-08-14 | 2017-10-05 | 111 | 611d | 0d |  | Development | 312h | 17,550 |
| 113 | 1.1.10.1.3.4 | Implementatie & testing |  | 5d | 2017-10-06 | 2017-10-12 | 112 | 611d |  |  | Lead Project Consultant; Technical Consultant | 80h | 7,020 |
| 114 | 2.6 | Rate Manual ready - Original | milestone | 0d | 2018-03-01 | 2018-03-01 | 98, 104, 119, 109, 124, 99 | 512d | 0d | start no earlier than 2018-03-01 |  |  |  |
| 115 | 1.1.10.3 | Refine Rate Manual |  | 20d? | 2018-03-01 | 2018-03-28 | 114 | 512d |  | start no earlier than 2017-11-13 |  |  |  |
| 116 | 1.1.11 | **Technical test / acceptance environment - 44** |  | 31.3d | 2017-07-10 | 2017-08-22 |  | 668.7d |  |  |  | 10.4h | 585 |
| 117 | 1.1.11.1 | Delivery of specs test & acceptance: GLOBIS | milestone | 0d | 2017-07-10 | 2017-07-10 |  | 698.7d | 30d | start no earlier than 2017-07-10 |  |  |  |
| 118 | 1.1.11.2 | Development |  | 1.3d | 2017-08-21 | 2017-08-22 | 117 | 668.7d |  | start no earlier than 2017-08-21 | Development | 10.4h | 585 |
| 119 | 1.1.12 | **Framework Program security - 42** |  | 26.5d | 2017-10-19 | 2017-11-24 |  | 580.5d | 68.5d |  |  | 144h | 9,540 |
| 120 | 1.1.12.1 | Use Case & data samples delivered: Ewals (& GLOBIS?) |  | 10d | 2017-10-19 | 2017-11-02 | 121SF | 597d |  |  |  |  |  |
| 121 | 1.1.12.2 | Technical Design |  | 2d | 2017-11-02 | 2017-11-03 |  | 580.5d | 0d | start no earlier than 2017-11-02 | Technical Analyst | 16h | 1,584 |
| 122 | 1.1.12.3 | Development |  | 13d | 2017-11-06 | 2017-11-22 | 121 | 580.5d | 0d |  | Development | 104h | 5,850 |
| 123 | 1.1.12.4 | Implementatie & testing |  | 1.5d | 2017-11-23 | 2017-11-24 | 122 | 580.5d |  |  | Lead Project Consultant; Technical Consultant | 24h | 2,106 |
| 124 | 1.1.13 | **Framework Data acces security - 43** |  | 88.5d | 2017-10-24 | 2018-02-23 |  | 515.5d | 3.5d |  |  | 696h | 45,144 |
| 125 | 1.1.13.1 | Use Case & data samples delivered: Ewals (& GLOBIS?) |  | 10d | 2017-10-24 | 2017-11-07 | 126SF | 594d |  |  |  |  |  |
| 126 | 1.1.13.2 | Technical Design |  | 5d | 2017-11-07 | 2017-11-13 |  | 515.5d | 0d | start no earlier than 2017-11-06 | Technical Analyst | 40h | 3,960 |
| 127 | 1.1.13.3 | Development |  | 65d | 2017-11-14 | 2018-02-12 | 126 | 515.5d | 0d |  | Development | 520h | 29,250 |
| 128 | 1.1.13.4 | Implementatie & testing |  | 8.5d | 2018-02-13 | 2018-02-23 | 127 | 515.5d |  |  | Lead Project Consultant; Technical Consultant | 136h | 11,934 |
| 129 | 1.1.14 | Technical GO-live | milestone | 1d? | 2018-03-05 | 2018-03-05 | 130 | 492d | 0d | start no earlier than 2018-03-05 |  |  |  |

Notes:
- 117: PDE

| ID | WBS | Task | Type | Duration | Start | Finish | Predecessors | Total slack | Free slack | Constraint | Resources | Work | Cost |
| --- | --- | --- | --- | --- | --- | --- | --- | --- | --- | --- | --- | --- | --- |
| 130 | 1.1.15 | **Technical live: production environment - 45** |  | 74.3d | 2017-11-20 | 2018-03-02 |  | 471.2d | 0.7d |  |  | 10.4h | 585 |
| 131 | 1.1.15.1 | Delivery of specs production: GLOBIS | milestone | 0d | 2017-11-20 | 2017-11-20 |  | 544.2d | 73d | start no earlier than 2017-11-20 |  |  |  |
| 132 | 1.1.15.2 | Development |  | 1.3d | 2018-03-01 | 2018-03-02 | 131 | 471.2d | 0d | start no earlier than 2018-03-01 | Development | 10.4h | 585 |
| 133 | 1.1.16 | **Hyper-care: Fase 1 (after Technical live: 45)** |  | 58.5d | 2018-03-02 | 2018-05-23 |  | 471.2d |  |  |  | 468h | 26,325 |
| 134 | 1.1.16.1 | Development (GLOBIS) |  | 58.5d | 2018-03-02 | 2018-05-23 | 132 | 471.2d | 0d | start no earlier than 2018-03-02 | Development | 468h | 26,325 |
| 135 | 1.1.17 | Start Support Fase 1: ---Business as usual--- | milestone | 1d? | 2018-05-23 | 2018-05-24 | 134 | 471.2d |  |  |  |  |  |
| 136 | 1.1.18 | Preparation production environment Fase 1: Ewals |  | 37d? | 2018-03-06 | 2018-04-25 | 129 | 492d |  |  |  |  |  |
| 137 | 2.7 | Functional Go-Live Production: Fase 1 (GlobSim part1, Rate Manual, Contract Structure, Financial plan) | milestone | 0d | 2018-04-30 | 2018-04-30 | 97, 69, 79, 55, 12, 138, 80 | 490d |  | start no earlier than 2018-04-30 |  |  |  |
| 138 | 1.1.20 | **Interfaces (GlobSync part 1)** |  | 98d | 2017-07-03 | 2017-11-15 |  | 0d |  |  |  | 708h | 48,645 |
| 139 | 1.1.20.1 | **Globsync Dotiga - 35** |  | 19.5d | 2017-10-19 | 2017-11-15 |  | 72.5d |  |  |  | 84h | 5,913 |
| 140 | 1.1.20.1.1 | Use Case & data samples delivered: Crossroad & Ewals? (& GLOBIS?) |  | 10d | 2017-10-19 | 2017-11-02 | 141SF | 616.5d |  |  |  |  |  |
| 141 | 1.1.20.1.2 | Technical Design |  | 2d | 2017-11-02 | 2017-11-06 | 162 | 62.5d | 0d | start no earlier than 2017-11-02 | Technical Analyst | 16h | 1,584 |
| 142 | 1.1.20.1.3 | Development |  | 6.5d | 2017-11-06 | 2017-11-14 | 141 | 62.5d | 0d | start no earlier than 2017-11-06 | Development | 52h | 2,925 |
| 143 | 1.1.20.1.4 | Implementatie & testing |  | 1d | 2017-11-15 | 2017-11-15 | 142 | 62.5d |  | finish no later than 2018-02-12 | Lead Project Consultant; Technical Consultant | 16h | 1,404 |
| 144 | 1.1.20.2 | **Basis opzet Globsync - 30** |  | 17.5d | 2017-07-03 | 2017-07-31 |  |  |  |  |  | 152h | 10,332 |
| 145 | 1.1.20.2.1 | Technical Design |  | 3d | 2017-07-03 | 2017-07-05 |  | 619d | 0d | start no earlier than 2017-07-03 | Technical Analyst | 24h | 2,376 |
| 146 | 1.1.20.2.2 | Development |  | 13d | 2017-07-06 | 2017-07-24 | 145 | 619d | 0d |  | Development | 104h | 5,850 |
| 147 | 1.1.20.2.3 | Implementatie & testing |  | 1.5d | 2017-07-25 | 2017-07-26 | 146 | 619d | 7.5d |  | Lead Project Consultant; Technical Consultant | 24h | 2,106 |
| 148 | 1.1.20.3 | **Globsync iPlan - 31 & Globsync iCare - 32** |  | 48.5d | 2017-07-11 | 2017-09-15 |  | 622.5d |  |  |  | 304h | 20,574 |
| 149 | 1.1.20.3.1 | Use Case & data samples delivered: Crossroad & Ewals? (& GLOBIS?) |  | 10d | 2017-07-11 | 2017-07-25 | 150SF | 689d |  |  |  |  |  |
| 150 | 1.1.20.3.2 | Technical Design |  | 5d | 2017-07-25 | 2017-08-03 |  | 612.5d | 0d | start no earlier than 2017-07-17 | Technical Analyst | 40h | 3,960 |
| 151 | 1.1.20.3.3 | Development |  | 26d | 2017-08-07 | 2017-09-11 | 150, 147 | 611.5d | 0d | start no earlier than 2017-08-07 | Development | 208h | 11,700 |
| 152 | 1.1.20.3.4 | Implementatie & testing |  | 3.5d | 2017-09-12 | 2017-09-15 | 151 | 611.5d | 4.5d |  | Lead Project Consultant; Technical Consultant | 56h | 4,914 |
| 153 | 1.1.20.4 | **Globsync Ptv - 75** |  | 18.5d | 2017-09-08 | 2017-10-04 |  | 617d |  |  |  | 76h | 5,121 |
| 154 | 1.1.20.4.1 | Use Case & data samples delivered: Crossroad & Ewals? (& GLOBIS?) |  | 10d | 2017-09-08 | 2017-09-22 | 155SF | 646d |  |  |  |  |  |
| 155 | 1.1.20.4.2 | Technical Design |  | 1d | 2017-09-22 | 2017-09-22 | 152 | 607d | 0d | start no earlier than 2017-09-22 | Technical Analyst | 8h | 792 |
| 156 | 1.1.20.4.3 | Development |  | 6.5d | 2017-09-25 | 2017-10-03 | 155 | 607d | 0d | start no earlier than 2017-09-25 | Development | 52h | 2,925 |
| 157 | 1.1.20.4.4 | Implementatie & testing |  | 1d | 2017-10-03 | 2017-10-04 | 156 | 607d | 41.5d |  | Lead Project Consultant; Technical Consultant | 16h | 1,404 |

Notes:
- 130: omgeving beschikbaar,
- 133: GLOBIS AND Ewals
- 139: Af te stemmen met Crossroad: moet klaar zijn voor maart 2018
- 153: rechtstreeks aanspreken of via WSO2? TBD met Tim en KVE / Antwoord: rechtstreeks aanspreken ifv performantie

| ID | WBS | Task | Type | Duration | Start | Finish | Predecessors | Total slack | Free slack | Constraint | Resources | Work | Cost |
| --- | --- | --- | --- | --- | --- | --- | --- | --- | --- | --- | --- | --- | --- |
| 158 | 1.1.20.5 | **Technical Dotiga - 49** |  | 20.5d | 2017-10-05 | 2017-11-02 |  | 72.5d |  |  |  | 92h | 6,705 |
| 159 | 1.1.20.5.1 | Use Case & data samples delivered: Crossroad & Ewals? (& GLOBIS?) |  | 10d | 2017-10-05 | 2017-10-19 | 160SF | 627d |  |  |  |  |  |
| 160 | 1.1.20.5.2 | Technical Design |  | 3d | 2017-10-19 | 2017-10-23 |  | 62.5d | 0d | start no earlier than 2017-10-19 | Technical Analyst | 24h | 2,376 |
| 161 | 1.1.20.5.3 | Development |  | 6.5d | 2017-10-24 | 2017-11-01 | 160 | 62.5d | 0d |  | Development | 52h | 2,925 |
| 162 | 1.1.20.5.4 | Implementatie & testing |  | 1d | 2017-11-01 | 2017-11-02 | 161 | 62.5d | 0d |  | Lead Project Consultant; Technical Consultant | 16h | 1,404 |
| 163 | 3 | **FASE 2: Network functionalities** |  | 608d? | 2017-08-11 | 2019-12-10 |  | 68d |  | start no earlier than 2017-05-23 |  | 5625.6h | 368,316 |
| 164 | 1.2.1 | **Creation Network Functionalities** |  | 259d | 2017-08-11 | 2018-08-08 |  | 284.5d | 60d |  |  | 3268h | 221,553 |
| 165 | 1.2.1.1 | **GlobSync part 2 (Network)** |  | 170.5d | 2017-11-08 | 2018-07-04 |  | 221.5d |  |  |  | 604h | 43,155 |
| 166 | 1.2.1.1.1 | **Interfacing other/temp 38** |  | 64.25d | 2018-01-10 | 2018-04-10 |  | 503.75d |  |  |  | 236h | 16,245 |
| 167 | 1.2.1.1.1.1 | Use Case & data samples delivered: Crossroad & Ewals? (& GLOBIS?) |  | 10d | 2018-01-10 | 2018-01-24 | 168SF | 558d |  |  |  |  |  |
| 168 | 1.2.1.1.1.2 | Technical Design p1 |  | 2.5d | 2018-01-24 | 2018-01-26 |  | 535.5d | 0d | start no earlier than 2018-01-24 | Technical Analyst | 20h | 1,980 |
| 169 | 1.2.1.1.1.3 | Development p1 |  | 10d | 2018-01-29 | 2018-02-09 | 168 | 535d | 0d | start no earlier than 2018-01-29 | Development | 80h | 4,500 |
| 170 | 1.2.1.1.1.4 | Implementatie & testing p1 |  | 1.25d | 2018-02-23 | 2018-02-28 | 169 | 532.75d |  |  | Lead Project Consultant; Technical Consultant | 20h | 1,755 |
| 171 | 1.2.1.1.1.5 | Technical Design p2 |  | 2.5d | 2018-03-22 | 2018-03-26 |  | 503.75d | 0d | start no earlier than 2018-03-22 | Technical Analyst | 20h | 1,980 |
| 172 | 1.2.1.1.1.6 | Development p2 |  | 9.5d | 2018-03-26 | 2018-04-06 | 171 | 503.75d | 0d |  | Development | 76h | 4,275 |
| 173 | 1.2.1.1.1.7 | Implementatie & testing p2 |  | 1.25d | 2018-04-09 | 2018-04-10 | 172 | 503.75d |  |  | Lead Project Consultant; Technical Consultant | 20h | 1,755 |
| 174 | 1.2.1.1.2 | **Globsync Fleetwave ? - 37** |  | 15d | 2017-12-25 | 2018-01-12 |  | 205.5d |  |  |  |  |  |
| 175 | 1.2.1.1.2.1 | Use Case & data samples delivered: Crossroad & Ewals? (& GLOBIS?) |  | 10d | 2017-12-25 | 2018-01-08 | 176SF | 570d |  |  |  |  |  |
| 176 | 1.2.1.1.2.2 | Technical Design | milestone | 0d | 2018-01-08 | 2018-01-08 |  | 195.5d | 0d | start no earlier than 2018-01-08 | Technical Analyst |  |  |
| 177 | 1.2.1.1.2.3 | Development |  | 5d | 2018-01-08 | 2018-01-12 | 176 | 195.5d | 0d | finish no earlier than 2018-01-12 |  |  |  |
| 178 | 1.2.1.1.2.4 | Implementatie & testing | milestone | 0d | 2018-01-12 | 2018-01-12 | 177 | 195.5d |  | finish no later than 2018-10-15 | Lead Project Consultant; Technical Consultant |  |  |
| 179 | 1.2.1.1.3 | **Globsync Transics - 33** |  | 22d | 2017-11-08 | 2017-12-07 |  | 221.5d |  |  |  | 92h | 6,705 |
| 180 | 1.2.1.1.3.1 | Use Case & data samples delivered: Crossroad & Ewals? (& GLOBIS?) |  | 10d | 2017-11-08 | 2017-11-22 | 181SF | 603d |  |  |  |  |  |
| 181 | 1.2.1.1.3.2 | Technical Design |  | 3d | 2017-11-22 | 2017-11-24 |  | 211.5d | 0d | start no earlier than 2017-11-22 | Technical Analyst | 24h | 2,376 |
| 182 | 1.2.1.1.3.3 | Development |  | 6.5d | 2017-11-27 | 2017-12-05 | 181 | 211.5d | 0d |  | Development | 52h | 2,925 |
| 183 | 1.2.1.1.3.4 | Implementatie & testing |  | 1d | 2017-12-05 | 2017-12-07 | 182 | 211.5d |  | finish no later than 2018-10-01 | Lead Project Consultant; Technical Consultant | 16h | 1,404 |

Notes:
- 158: uittesten, poc, integratieaanpak.
- 166: TBD met Crossroad en Ewals C.C.. Crossroad zet intreface op, Globis implementeert deze in de Globis Software....
- 174: Nog niet duidelijk of er interface nodig is. tbd met CRD (Tim). We weten weinig over deze interface, en kunnen deze taak momenteel niet verder inplannen met de huidige kennis. TBD met Ewals en Crossroad.
- 179: TBD met Crossroad en Ewals C.C.. Crossroad zet intreface op, Globis implementeert deze in de Globis Software....

| ID | WBS | Task | Type | Duration | Start | Finish | Predecessors | Total slack | Free slack | Constraint | Resources | Work | Cost |
| --- | --- | --- | --- | --- | --- | --- | --- | --- | --- | --- | --- | --- | --- |
| 184 | 1.2.1.1.4 | **Globsync Fis - 34** |  | 22.5d | 2018-06-04 | 2018-07-04 |  | 442.5d |  |  |  | 108h | 8,289 |
| 185 | 1.2.1.1.4.1 | Use Case & data samples delivered: Crossroad & Ewals? (& GLOBIS?) |  | 10d | 2018-06-04 | 2018-06-18 | 186SF | 455d |  |  |  |  |  |
| 186 | 1.2.1.1.4.2 | Technical Design |  | 5d | 2018-06-18 | 2018-06-22 |  | 442.5d | 0d | start no earlier than 2018-06-18 | Technical Analyst | 40h | 3,960 |
| 187 | 1.2.1.1.4.3 | Development |  | 6.5d | 2018-06-25 | 2018-07-03 | 186 | 442.5d | 0d |  | Development | 52h | 2,925 |
| 188 | 1.2.1.1.4.4 | Implementatie & testing |  | 1d | 2018-07-03 | 2018-07-04 | 187 | 442.5d |  |  | Lead Project Consultant; Technical Consultant | 16h | 1,404 |
| 189 | 1.2.1.1.5 | **Globsync Lobster - 36** |  | 29.5d | 2018-01-29 | 2018-03-09 |  | 525.5d |  |  |  | 168h | 11,916 |
| 190 | 1.2.1.1.5.1 | Use Case & data samples delivered: Crossroad & Ewals? (& GLOBIS?) |  | 10d | 2018-01-29 | 2018-02-12 | 191SF | 545d |  |  |  |  |  |
| 191 | 1.2.1.1.5.2 | Technical Design |  | 5d | 2018-02-12 | 2018-02-16 |  | 525.5d | 0d | start no earlier than 2018-02-12 | Technical Analyst | 40h | 3,960 |
| 192 | 1.2.1.1.5.3 | Development |  | 13d | 2018-02-19 | 2018-03-07 | 191 | 525.5d | 0d |  | Development | 104h | 5,850 |
| 193 | 1.2.1.1.5.4 | Implementatie & testing |  | 1.5d | 2018-03-08 | 2018-03-09 | 192 | 525.5d |  |  | Lead Project Consultant; Technical Consultant | 24h | 2,106 |
| 194 | 1.2.1.1.6 | **Data conversie tabellen (Edi) - 54 (coupled to GlobSync Lobster)** |  | 0d | 2018-02-16 | 2018-02-16 |  | 540d |  |  |  |  |  |
| 195 | 1.2.1.1.6.1 | Technical Design | milestone | 0d | 2018-02-16 | 2018-02-16 | 191 | 540d | 0d |  | Technical Analyst |  |  |
| 196 | 1.2.1.1.6.2 | Development | milestone | 0d | 2018-02-16 | 2018-02-16 | 195 | 540d | 0d |  | Development |  |  |
| 197 | 1.2.1.1.6.3 | Implementatie & testing | milestone | 0d | 2018-02-16 | 2018-02-16 | 196 | 540d |  |  | Lead Project Consultant; Technical Consultant |  |  |
| 198 | 1.2.1.2 | **Rate management customer & supplier - link met order management - 16, 17** |  | 56.5d | 2017-08-11 | 2017-10-30 |  | 619.5d |  |  |  | 364h | 24,201 |
| 199 | 1.2.1.2.1 | Use Case & data samples delivered: Ewals (& GLOBIS?) |  | 15d | 2017-08-11 | 2017-09-01 | 200SF | 661d |  |  |  |  |  |
| 200 | 1.2.1.2.2 | Technical Design |  | 5d | 2017-09-01 | 2017-09-07 |  | 619.5d | 0d | start no earlier than 2017-09-01 | Technical Analyst | 40h | 3,960 |
| 201 | 1.2.1.2.3 | Development |  | 32.5d | 2017-09-08 | 2017-10-24 | 200 | 619.5d | 0d |  | Development | 260h | 14,625 |
| 202 | 1.2.1.2.4 | Implementatie & testing |  | 4d | 2017-10-24 | 2017-10-30 | 201 | 619.5d |  |  | Lead Project Consultant; Technical Consultant | 64h | 5,616 |
| 203 | 1.2.1.3 | **Payweight conversie - 8** |  | 21.5d | 2017-10-12 | 2017-11-10 |  | 610.5d |  |  |  | 52h | 2,925 |
| 204 | 1.2.1.3.1 | Use Case & data samples delivered: Ewals (& GLOBIS?) |  | 15d | 2017-10-12 | 2017-11-02 | 205SF | 617d |  |  |  |  |  |
| 205 | 1.2.1.3.2 | Development |  | 6.5d | 2017-11-02 | 2017-11-10 |  | 610.5d | 0d | start no earlier than 2017-11-02 | Development | 52h | 2,925 |
| 206 | 1.2.1.4 | **Quotes - link fin plan - 11** |  | 28.5d | 2018-01-18 | 2018-02-27 |  | 533.5d |  |  |  | 152h | 10,332 |
| 207 | 1.2.1.4.1 | Use Case & data samples delivered: Ewals (& GLOBIS?) |  | 10d | 2018-01-18 | 2018-02-01 | 208SF | 552d |  |  |  |  |  |
| 208 | 1.2.1.4.2 | Technical Design |  | 3d | 2018-02-01 | 2018-02-05 |  | 534.5d | 0d | start no earlier than 2018-02-01 | Technical Analyst | 24h | 2,376 |
| 209 | 1.2.1.4.3 | Development |  | 13d | 2018-02-06 | 2018-02-22 | 208 | 534.5d | 1d |  | Development | 104h | 5,850 |
| 210 | 1.2.1.4.4 | Implementatie & testing |  | 1.5d | 2018-02-26 | 2018-02-27 | 209 | 533.5d |  | start no earlier than 2018-02-26 | Lead Project Consultant; Technical Consultant | 24h | 2,106 |

Notes:
- 184: TBD met Crossroad en Ewals C.C.. Crossroad zet intreface op, Globis implementeert deze in de Globis Software....
- 189: TBD met Crossroad en Ewals C.C.. Crossroad zet intreface op, Globis implementeert deze in de Globis Software....
- 194: TBD met KVE

| ID | WBS | Task | Duration | Start | Finish | Predecessors | Total slack | Free slack | Constraint | Resources | Work | Cost |
| --- | --- | --- | --- | --- | --- | --- | --- | --- | --- | --- | --- | --- |
| 211 | 1.2.1.5 | **Order management incl Edi & blacklisted - 19** | 49.5d | 2017-12-12 | 2018-02-19 |  | 539.5d |  |  |  | 304h | 20,574 |
| 212 | 1.2.1.5.1 | Use Case & data samples delivered: Ewals (& GLOBIS?) | 15d | 2017-12-12 | 2018-01-02 | 213SF | 574d |  |  |  |  |  |
| 213 | 1.2.1.5.2 | Technical Design | 5d | 2018-01-02 | 2018-01-08 |  | 539.5d | 0d | start no earlier than 2018-01-02 | Technical Analyst | 40h | 3,960 |
| 214 | 1.2.1.5.3 | Development | 26d | 2018-01-09 | 2018-02-13 | 213 | 539.5d | 0d |  | Development | 208h | 11,700 |
| 215 | 1.2.1.5.4 | Implementatie & testing | 3.5d | 2018-02-14 | 2018-02-19 | 214 | 539.5d |  |  | Lead Project Consultant; Technical Consultant | 56h | 4,914 |
| 216 | 1.2.1.6 | **Financieel plan statistics / allocatie cost revenue - 21** | 35d | 2018-01-18 | 2018-03-07 |  | 527d |  |  |  | 220h | 14,661 |
| 217 | 1.2.1.6.1 | Use Case & data samples delivered: Ewals (& GLOBIS?) | 10d | 2018-01-18 | 2018-02-01 | 218SF | 552d |  |  |  |  |  |
| 218 | 1.2.1.6.2 | Technical Design | 3d | 2018-02-01 | 2018-02-05 |  | 527d | 0d | start no earlier than 2018-02-01 | Technical Analyst | 24h | 2,376 |
| 219 | 1.2.1.6.3 | Development | 19.5d | 2018-02-06 | 2018-03-05 | 218 | 527d | 0d |  | Development | 156h | 8,775 |
| 220 | 1.2.1.6.4 | Implementatie & testing | 2.5d | 2018-03-05 | 2018-03-07 | 219 | 527d |  |  | Lead Project Consultant; Technical Consultant | 40h | 3,510 |
| 221 | 1.2.1.7 | **Procurement basis contract structure / planning (interbranch enkel link) Order aanmaken interbranch + communicatie consignment nr - 22** | 35d | 2018-01-23 | 2018-03-12 |  | 524d |  |  |  | 220h | 14,661 |
| 222 | 1.2.1.7.1 | Use Case & data samples delivered: Ewals (& GLOBIS?) | 10d | 2018-01-23 | 2018-02-06 | 223SF | 549d |  |  |  |  |  |
| 223 | 1.2.1.7.2 | Technical Design | 3d | 2018-02-06 | 2018-02-08 |  | 524d | 0d | start no earlier than 2018-02-01 | Technical Analyst | 24h | 2,376 |
| 224 | 1.2.1.7.3 | Development | 19.5d | 2018-02-09 | 2018-03-08 | 223 | 524d | 0d |  | Development | 156h | 8,775 |
| 225 | 1.2.1.7.4 | Implementatie & testing | 2.5d | 2018-03-08 | 2018-03-12 | 224 | 524d |  |  | Lead Project Consultant; Technical Consultant | 40h | 3,510 |
| 226 | 1.2.1.8 | **Contract based billing proposals customer & supplier - 23, 24** | 40d | 2017-12-19 | 2018-02-12 |  | 544d |  |  |  | 220h | 14,661 |
| 227 | 1.2.1.8.1 | Use Case & data samples delivered: Ewals (& GLOBIS?) | 15d | 2017-12-19 | 2018-01-09 | 228SF | 569d |  |  |  |  |  |
| 228 | 1.2.1.8.2 | Technical Design | 3d | 2018-01-09 | 2018-01-11 |  | 544d | 0d | start no earlier than 2018-01-02 | Technical Analyst | 24h | 2,376 |
| 229 | 1.2.1.8.3 | Development | 19.5d | 2018-01-12 | 2018-02-08 | 228 | 544d | 0d |  | Development | 156h | 8,775 |
| 230 | 1.2.1.8.4 | Implementatie & testing | 2.5d | 2018-02-08 | 2018-02-12 | 229 | 544d |  |  | Lead Project Consultant; Technical Consultant | 40h | 3,510 |
| 231 | 1.2.1.9 | **Facturatie en link FIS (Expected cost&revenue/invoices) - 25** | 64d | 2018-05-11 | 2018-08-08 |  | 417d |  |  |  | 432h | 28,530 |
| 232 | 1.2.1.9.1 | Use Case & data samples delivered: Ewals (& GLOBIS?) | 15d | 2018-05-11 | 2018-06-01 | 233SF | 466d |  | start no earlier than 2018-04-17 |  |  |  |
| 233 | 1.2.1.9.2 | Technical Design | 5d | 2018-06-01 | 2018-06-07 |  | 417d | 0d | start no earlier than 2018-06-01 | Technical Analyst | 40h | 3,960 |
| 234 | 1.2.1.9.3 | Development | 39d | 2018-06-08 | 2018-08-01 | 233 | 417d | 0d |  | Development | 312h | 17,550 |
| 235 | 1.2.1.9.4 | Implementatie & testing | 5d | 2018-08-02 | 2018-08-08 | 234 | 417d |  |  | Lead Project Consultant; Technical Consultant | 80h | 7,020 |

| ID | WBS | Task | Duration | Start | Finish | Predecessors | Total slack | Free slack | Constraint | Resources | Work | Cost |
| --- | --- | --- | --- | --- | --- | --- | --- | --- | --- | --- | --- | --- |
| 236 | 1.2.1.10 | **Intercompany/interbranch setup - 26** | 49.5d | 2018-05-18 | 2018-07-26 |  | 426.5d |  |  |  | 304h | 20,574 |
| 237 | 1.2.1.10.1 | Use Case & data samples delivered: Ewals (& GLOBIS?) | 15d | 2018-05-18 | 2018-06-08 | 238SF | 461d |  | start no earlier than 2018-04-17 |  |  |  |
| 238 | 1.2.1.10.2 | Technical Design | 5d | 2018-06-08 | 2018-06-14 |  | 426.5d | 0d | start no earlier than 2018-06-01 | Technical Analyst | 40h | 3,960 |
| 239 | 1.2.1.10.3 | Development | 26d | 2018-06-15 | 2018-07-20 | 238 | 426.5d | 0d |  | Development | 208h | 11,700 |
| 240 | 1.2.1.10.4 | Implementatie & testing | 3.5d | 2018-07-23 | 2018-07-26 | 239 | 426.5d |  |  | Lead Project Consultant; Technical Consultant | 56h | 4,914 |
| 241 | 1.2.1.11 | **Fin plan intercompany/interbranch verwerking & Procurement volledige doorlinking Cost Revenue - 27, 28** | 42d | 2018-04-11 | 2018-06-07 |  | 461d |  |  |  | 236h | 16,245 |
| 242 | 1.2.1.11.1 | Use Case & data samples delivered: Ewals (& GLOBIS?) | 15d | 2018-04-11 | 2018-05-02 | 243SF | 488d |  | start no earlier than 2018-04-09 |  |  |  |
| 243 | 1.2.1.11.2 | Technical Design | 5d | 2018-05-02 | 2018-05-08 |  | 461d | 0d | start no earlier than 2018-05-02 | Technical Analyst | 40h | 3,960 |
| 244 | 1.2.1.11.3 | Development | 19.5d | 2018-05-09 | 2018-06-05 | 243 | 461d | 0d |  | Development | 156h | 8,775 |
| 245 | 1.2.1.11.4 | Implementatie & testing | 2.5d | 2018-06-05 | 2018-06-07 | 244 | 461d |  |  | Lead Project Consultant; Technical Consultant | 40h | 3,510 |
| 246 | 1.2.1.12 | **Basis rapporten opstellen - 40** | 19d | 2018-02-15 | 2018-03-13 |  | 523d |  |  |  | 68h | 4,329 |
| 247 | 1.2.1.12.1 | Use Case & data samples delivered: Ewals (& GLOBIS?) | 10d | 2018-02-15 | 2018-03-01 | 248SF | 532d |  |  |  |  |  |
| 248 | 1.2.1.12.2 | Development | 6.5d | 2018-03-01 | 2018-03-09 |  | 524.5d | 0d | start no earlier than 2018-03-01 | Development | 52h | 2,925 |
| 249 | 1.2.1.12.3 | Implementatie & testing | 1d | 2018-03-13 | 2018-03-13 | 248 | 523d |  | start no earlier than 2018-03-13 | Lead Project Consultant; Technical Consultant [150%] | 16h | 1,404 |
| 250 | 1.2.1.13 | **Rapporterings cubes operational - 39** | 22d | 2018-01-26 | 2018-02-26 |  | 534d |  |  |  | 92h | 6,705 |
| 251 | 1.2.1.13.1 | Use Case & data samples delivered: Ewals (& GLOBIS?) | 10d | 2018-01-26 | 2018-02-09 | 252SF | 546d |  |  |  |  |  |
| 252 | 1.2.1.13.2 | Technical Design | 3d | 2018-02-09 | 2018-02-13 |  | 535.5d | 0d | start no earlier than 2018-02-01 | Technical Analyst | 24h | 2,376 |
| 253 | 1.2.1.13.3 | Development | 6.5d | 2018-02-14 | 2018-02-22 | 252 | 535.5d | 1.5d |  | Development | 52h | 2,925 |
| 254 | 1.2.1.13.4 | Implementatie & testing | 1d | 2018-02-26 | 2018-02-26 | 253 | 534d |  | start no earlier than 2018-02-25 | Lead Project Consultant; Technical Consultant | 16h | 1,404 |
| 255 | 1.2.2 | **Portal (Network)** | 132.5d | 2018-04-18 | 2018-10-19 |  | 365.5d |  |  |  | 676h | 45,477 |
| 256 | 1.2.2.1 | **Customer portal - 58** | 49.5d | 2018-08-13 | 2018-10-19 | 266 | 365.5d | 8.5d |  |  | 304h | 20,574 |
| 257 | 1.2.2.1.1 | Use Case & data samples delivered: Ewals (& GLOBIS?) | 15d | 2018-08-13 | 2018-09-03 | 258SF | 400d |  | start no earlier than 2018-04-17 |  |  |  |
| 258 | 1.2.2.1.2 | Technical Design | 5d | 2018-09-03 | 2018-09-07 |  | 365.5d | 0d | start no earlier than 2018-09-03 | Technical Analyst | 40h | 3,960 |
| 259 | 1.2.2.1.3 | Development | 26d | 2018-09-10 | 2018-10-15 | 258 | 365.5d | 0d |  | Development | 208h | 11,700 |
| 260 | 1.2.2.1.4 | Implementatie & testing | 3.5d | 2018-10-16 | 2018-10-19 | 259 | 365.5d |  |  | Lead Project Consultant; Technical Consultant | 56h | 4,914 |

| ID | WBS | Task | Type | Duration | Start | Finish | Predecessors | Total slack | Free slack | Constraint | Resources | Work | Cost |
| --- | --- | --- | --- | --- | --- | --- | --- | --- | --- | --- | --- | --- | --- |
| 261 | 1.2.2.2 | **Carrier portal price request link - 59** |  | 23.5d | 2018-04-18 | 2018-05-21 |  | 406.5d | 3.5d |  |  | 76h | 5,121 |
| 262 | 1.2.2.2.1 | Use Case & data samples delivered: Ewals (& GLOBIS?) |  | 15d | 2018-04-18 | 2018-05-09 | 263SF | 415d |  | start no earlier than 2018-04-17 |  |  |  |
| 263 | 1.2.2.2.2 | Technical Design |  | 1d | 2018-05-09 | 2018-05-09 |  | 406.5d | 0d | start no earlier than 2018-05-02 | Technical Analyst | 8h | 792 |
| 264 | 1.2.2.2.3 | Development |  | 6.5d | 2018-05-10 | 2018-05-18 | 263 | 406.5d | 0d |  | Development | 52h | 2,925 |
| 265 | 1.2.2.2.4 | Implementatie & testing |  | 1d | 2018-05-18 | 2018-05-21 | 264 | 406.5d |  |  | Lead Project Consultant; Technical Consultant | 16h | 1,404 |
| 266 | 1.2.2.3 | **Carrier portal complete - 60** |  | 48.5d | 2018-05-25 | 2018-08-01 | 261 | 388d | 7.5d |  |  | 296h | 19,782 |
| 267 | 1.2.2.3.1 | Use Case & data samples delivered: Ewals (& GLOBIS?) |  | 15d | 2018-05-25 | 2018-06-15 | 268SF | 421.5d |  | start no earlier than 2018-04-17 |  |  |  |
| 268 | 1.2.2.3.2 | Technical Design |  | 4d | 2018-06-15 | 2018-06-20 |  | 388d | 0d | start no earlier than 2018-06-01 | Technical Analyst | 32h | 3,168 |
| 269 | 1.2.2.3.3 | Development |  | 26d | 2018-06-21 | 2018-07-26 | 268 | 388d | 0d |  | Development | 208h | 11,700 |
| 270 | 1.2.2.3.4 | Implementatie & testing |  | 3.5d | 2018-07-27 | 2018-08-01 | 269 | 388d |  |  | Lead Project Consultant; Technical Consultant | 56h | 4,914 |
| 271 | 3.1 | Delivery of Network Functionalities by Globis | milestone | 0d | 2018-11-01 | 2018-11-01 | 164, 256, 266 | 357d |  | start no earlier than 2018-11-01 |  |  |  |
| 272 | 3.2 | Go-Live Network Functionalities 1st branch (Italy) |  | 4.1w | 2018-11-05 | 2018-12-03 |  | 124.5d | 43.5d | start no earlier than 2018-11-05 |  |  |  |
| 273 | 1.2.5 | **Hyper-care: functional Go-Live 2nd branche (Germany)** |  | 26d | 2019-02-01 | 2019-03-08 | 272SS | 105d | 37d |  |  | 208h | 11,700 |
| 274 | 1.2.5.1 | Development |  | 26d | 2019-02-01 | 2019-03-08 |  | 105d |  | start no earlier than 2019-02-01 | Development | 208h | 11,700 |
| 275 | 1.2.6 | **Technical performance (WAN, Globis) - 47** |  | 83.5d | 2018-03-12 | 2018-07-05 |  | 441.5d |  |  |  | 600h | 40,446 |
| 276 | 1.2.6.1 | Use Case & data samples delivered: Ewals (& GLOBIS?) |  | 15d | 2018-03-12 | 2018-04-02 | 277SF | 510d |  | start no earlier than 2018-03-11 |  |  |  |
| 277 | 1.2.6.2 | Technical Design |  | 10d | 2018-04-02 | 2018-04-13 |  | 441.5d | 0d | start no earlier than 2018-04-02 | Technical Analyst | 80h | 7,920 |
| 278 | 1.2.6.3 | Development |  | 52d | 2018-04-16 | 2018-06-26 | 277 | 441.5d | 0d |  | Development | 416h | 23,400 |
| 279 | 1.2.6.4 | Implementatie & testing |  | 6.5d | 2018-06-27 | 2018-07-05 | 278 | 441.5d |  |  | Lead Project Consultant; Technical Consultant | 104h | 9,126 |
| 280 | 3.4 | Functional Network Scale-up by Ewals |  | 8mo | 2019-05-01 | 2019-12-10 | 283, 273 | 68d |  | start no earlier than 2019-05-01 |  |  |  |
| 281 | 1.2.8 | **Hyper-care: functional Go-Live 1st branche (Italy)** |  | 65d | 2018-10-01 | 2018-12-28 |  | 315d |  |  |  | 520h | 29,250 |
| 282 | 1.2.8.1 | Development |  | 65d | 2018-10-01 | 2018-12-28 |  | 315d |  | start no earlier than 2018-10-01 | Development | 520h | 29,250 |
| 283 | 3.3 | Go-Live of Network Functionalities 2nd branche (Germany) |  | 10w | 2019-02-01 | 2019-04-11 | 272 | 81d | 13d | start no earlier than 2019-02-01 |  |  |  |
| 284 | 1.2.10 | **Hyper-care: functional Go-Live other branches** |  | 44.2d | 2019-04-01 | 2019-05-31 |  | 204.8d |  |  |  | 353.6h | 19,890 |
| 285 | 1.2.10.1 | Development |  | 44.2d | 2019-04-01 | 2019-05-31 |  | 204.8d | 0d | start no earlier than 2019-04-01 | Development | 353.6h | 19,890 |
| 286 | 1.2.11 | Start Support Fase 2: ---Business as usual--- | milestone | 1d? | 2019-05-31 | 2019-06-03 | 285 | 204.8d |  |  |  |  |  |

Notes:
- 272: The Go-live of Italy is of course dependent on the delivery of Globis. In the planning session is was discussed that the aim is to deliver 1 month before the set deadline of 1/11. This way there is the possibility to go-live in Italy a bit earlier. / 1/10 the earliest / 1/12 the latest
- 280: Netwerk (ES + UK) / FFW België / FFW Zweden / Tegelen / Oldenzaal / Uitgevoerd door Ewals C.C.

| ID | WBS | Task | Duration | Start | Finish | Predecessors | Total slack | Free slack | Constraint | Resources | Work | Cost |
| --- | --- | --- | --- | --- | --- | --- | --- | --- | --- | --- | --- | --- |
| 287 | 1.3 | **FASE 3: FFW** | 480d? | 2018-05-14 | 2020-03-13 |  | 0d |  |  |  | 1888h | 121,608 |
| 288 | 1.3.1 | **Create FFW Functionalities** | 272.5d | 2018-05-14 | 2019-05-29 |  | 190d |  |  |  | 1524h | 101,133 |
| 289 | 1.3.1.1 | **FFW one view - 62** | 40d | 2018-05-14 | 2018-07-06 |  | 440d |  |  |  | 220h | 14,661 |
| 290 | 1.3.1.1.1 | Use Case & data samples delivered: Ewals (& GLOBIS?) | 15d | 2018-05-14 | 2018-06-04 | 291SF | 465d |  | start no earlier than 2017-10-19 |  |  |  |
| 291 | 1.3.1.1.2 | Technical Design | 3d | 2018-06-04 | 2018-06-06 |  | 440d | 0d | start no earlier than 2018-06-04 | Technical Analyst | 24h | 2,376 |
| 292 | 1.3.1.1.3 | Development | 19.5d | 2018-06-07 | 2018-07-04 | 291 | 440d | 0d |  | Development | 156h | 8,775 |
| 293 | 1.3.1.1.4 | Implementatie & testing | 2.5d | 2018-07-04 | 2018-07-06 | 292 | 440d |  |  | Lead Project Consultant; Technical Consultant | 40h | 3,510 |
| 294 | 1.3.1.2 | **FFW Kpi's / Financieel plan - 63** | 32.5d | 2018-08-01 | 2018-09-14 |  | 390.5d |  |  |  | 152h | 10,332 |
| 295 | 1.3.1.2.1 | Use Case & data samples delivered: Ewals (& GLOBIS?) | 15d | 2018-08-01 | 2018-08-22 | 296SF | 408d |  | start no earlier than 2017-10-19 |  |  |  |
| 296 | 1.3.1.2.2 | Technical Design | 3d | 2018-08-22 | 2018-08-24 |  | 390.5d | 0d | start no earlier than 2018-08-22 | Technical Analyst | 24h | 2,376 |
| 297 | 1.3.1.2.3 | Development | 13d | 2018-08-27 | 2018-09-12 | 296 | 390.5d | 0d |  | Development | 104h | 5,850 |
| 298 | 1.3.1.2.4 | Implementatie & testing | 1.5d | 2018-09-13 | 2018-09-14 | 297 | 390.5d |  |  | Lead Project Consultant; Technical Consultant | 24h | 2,106 |
| 299 | 1.3.1.3 | **FFW Carrier management - 64** | 31.5d | 2018-08-02 | 2018-09-14 |  | 390.5d |  |  |  | 144h | 9,540 |
| 300 | 1.3.1.3.1 | Use Case & data samples delivered: Ewals (& GLOBIS?) | 15d | 2018-08-02 | 2018-08-23 | 301SF | 407d |  | start no earlier than 2017-10-19 |  |  |  |
| 301 | 1.3.1.3.2 | Technical Design | 2d | 2018-08-23 | 2018-08-24 |  | 390.5d | 0d | start no earlier than 2018-08-23 | Technical Analyst | 16h | 1,584 |
| 302 | 1.3.1.3.3 | Development | 13d | 2018-08-27 | 2018-09-12 | 301 | 390.5d | 0d |  | Development | 104h | 5,850 |
| 303 | 1.3.1.3.4 | Implementatie & testing | 1.5d | 2018-09-13 | 2018-09-14 | 302 | 390.5d |  |  | Lead Project Consultant; Technical Consultant | 24h | 2,106 |
| 304 | 1.3.1.4 | **FFW scenario's bij consignments - 66** | 39d | 2018-08-02 | 2018-09-25 |  | 383d |  |  |  | 212h | 13,869 |
| 305 | 1.3.1.4.1 | Use Case & data samples delivered: Ewals (& GLOBIS?) | 15d | 2018-08-02 | 2018-08-23 | 306SF | 407d |  | start no earlier than 2017-10-19 |  |  |  |
| 306 | 1.3.1.4.2 | Technical Design | 2d | 2018-08-23 | 2018-08-24 |  | 383d | 0d | start no earlier than 2018-08-23 | Technical Analyst | 16h | 1,584 |
| 307 | 1.3.1.4.3 | Development | 19.5d | 2018-08-27 | 2018-09-21 | 306 | 383d | 0d |  | Development | 156h | 8,775 |
| 308 | 1.3.1.4.4 | Implementatie & testing | 2.5d | 2018-09-21 | 2018-09-25 | 307 | 383d |  |  | Lead Project Consultant; Technical Consultant | 40h | 3,510 |
| 309 | 1.3.1.5 | **FFW daily tariff management spot-quoting (stijgende/dalende tendens) - 67** | 31.5d | 2018-08-02 | 2018-09-14 |  | 390.5d |  |  |  | 144h | 9,540 |
| 310 | 1.3.1.5.1 | Use Case & data samples delivered: Ewals (& GLOBIS?) | 15d | 2018-08-02 | 2018-08-23 | 311SF | 407d |  | start no earlier than 2017-10-19 |  |  |  |
| 311 | 1.3.1.5.2 | Technical Design | 2d | 2018-08-23 | 2018-08-24 |  | 390.5d | 0d | start no earlier than 2018-08-23 | Technical Analyst | 16h | 1,584 |
| 312 | 1.3.1.5.3 | Development | 13d | 2018-08-27 | 2018-09-12 | 311 | 390.5d | 0d |  | Development | 104h | 5,850 |
| 313 | 1.3.1.5.4 | Implementatie & testing | 1.5d | 2018-09-13 | 2018-09-14 | 312 | 390.5d |  |  | Lead Project Consultant; Technical Consultant | 24h | 2,106 |

| ID | WBS | Task | Type | Duration | Start | Finish | Predecessors | Total slack | Free slack | Constraint | Deadline | Resources | Work | Cost |
| --- | --- | --- | --- | --- | --- | --- | --- | --- | --- | --- | --- | --- | --- | --- |
| 314 | 1.3.1.6 | **FFW koppeling freight platforms - 70** |  | 43d | 2018-12-10 | 2019-02-06 |  | 67d |  |  |  |  | 364h | 24,201 |
| 315 | 1.3.1.6.1 | Use Case & data samples delivered: Ewals (& GLOBIS?) |  | 15d | 2018-12-10 | 2018-12-31 | 316SF | 315d |  | start no earlier than 2017-10-19 |  |  |  |  |
| 316 | 1.3.1.6.2 | Technical Design |  | 5d | 2018-12-31 | 2019-01-04 |  | 52d | 0d | start no earlier than 2018-12-30 |  | Technical Analyst | 40h | 3,960 |
| 317 | 1.3.1.6.3 | Development |  | 19d | 2019-01-07 | 2019-01-31 | 316 | 52d | 0d | finish no earlier than 2019-01-25 |  | Development | 260h | 14,625 |
| 318 | 1.3.1.6.4 | Implementatie & testing |  | 4d | 2019-02-01 | 2019-02-06 | 317 | 52d | 37d |  |  | Lead Project Consultant; Technical Consultant | 64h | 5,616 |
| 319 | 1.3.1.7 | **FFW pallet management - 71** |  | 3d | 2019-04-01 | 2019-05-29 |  |  |  |  |  |  |  |  |
| 320 | 1.3.1.7.1 | Technical Design | milestone | 0d | 2019-02-04 | 2019-02-04 |  | 290d |  | start no earlier than 2019-02-04 |  | Technical Analyst |  |  |
| 321 | 1.3.1.7.2 | Development | milestone | 0d | 2019-02-05 | 2019-02-05 |  | 289d |  | start no earlier than 2019-02-05 |  | Development |  |  |
| 322 | 1.3.1.7.3 | Implementatie & testing | milestone | 0d | 2019-02-07 | 2019-02-07 |  | 287d |  | start no earlier than 2019-02-07 |  | Lead Project Consultant; Technical Consultant |  |  |
| 323 | 1.3.1.8 | **FFW automated follow up - 72** |  | 47.5d | 2018-09-19 | 2018-11-23 |  | 340.5d |  |  |  |  | 288h | 18,990 |
| 324 | 1.3.1.8.1 | Use Case & data samples delivered: Ewals (& GLOBIS?) |  | 15d | 2018-09-19 | 2018-10-10 | 325SF | 373d |  | start no earlier than 2017-10-19 |  |  |  |  |
| 325 | 1.3.1.8.2 | Technical Design |  | 3d | 2018-10-10 | 2018-10-12 |  | 340.5d | 0d | start no earlier than 2018-10-10 |  | Technical Analyst | 24h | 2,376 |
| 326 | 1.3.1.8.3 | Development |  | 26d | 2018-10-15 | 2018-11-19 | 325 | 340.5d | 0d |  |  | Development | 208h | 11,700 |
| 327 | 1.3.1.8.4 | Implementatie & testing |  | 3.5d | 2018-11-20 | 2018-11-23 | 326 | 340.5d |  |  |  | Lead Project Consultant; Technical Consultant | 56h | 4,914 |
| 328 | 1.3.2 | Testing FFW Functionalities by Ewals C.C. |  | 95d? | 2019-04-01 | 2019-08-09 | 331 | 15d |  | finish no earlier than 2019-05-31 |  |  |  |  |
| 329 | 1.3.3 | **Hyper-care: FFW branches** |  | 45.5d | 2019-08-01 | 2019-10-03 | 328SS | 115.5d |  |  |  |  | 364h | 20,475 |
| 330 | 1.3.3.1 | Development |  | 45.5d | 2019-08-01 | 2019-10-03 |  | 115.5d | 0d | start no earlier than 2019-08-01 |  | Development | 364h | 20,475 |
| 331 | 4.1 | Delivery of FFW Functionalities by Globis | milestone | 0d | 2019-04-01 | 2019-04-01 | 318 | 15d | 0d | start no earlier than 2019-04-01 |  |  |  |  |
| 332 | 1.3.5 | Start Support Fase 3: ---Business as usual--- | milestone | 1d? | 2019-10-03 | 2019-10-04 | 330 | 115.5d |  |  |  |  |  |  |
| 333 | 4.2 | Roll-out company per company by Ewals C.C. |  | 7mo | 2019-09-02 | 2020-03-13 | 328 | 0d |  | start no earlier than 2019-09-01 |  |  |  |  |
| 334 | 4.3 | **FASE 4: What if development (GlobSim part 2)** |  | 299.5d? | 2017-10-30 | 2018-12-21 |  | 0d |  |  |  |  | 1272h | 91,800 |
| 335 | 1.4.1 | Detailplanning opstellen ism Ewals C.C. | milestone | 14.5d? | 2018-05-14 | 2018-06-01 |  | 0d |  | must finish on 2018-06-01 | 2018-05-21 |  |  |  |
| 336 | 1.4.2 | **Globsim - Whatif calculations - 55** |  | 125d | 2018-05-02 | 2018-09-28 |  |  |  |  |  |  | 952h | 62,820 |
| 337 | 1.4.2.1 | Use Case & data samples delivered: Ewals (& GLOBIS?) |  | 20d | 2017-10-30 | 2017-11-27 | 338SF | 600d |  | start no earlier than 2017-10-19 |  |  |  |  |
| 338 | 1.4.2.2 | Technical Design |  | 5d | 2017-11-27 | 2017-12-01 |  | 496d | 0d | start no earlier than 2017-11-27 |  | Technical Analyst | 40h | 3,960 |
| 339 | 1.4.2.3 | Development |  | 84d | 2017-12-04 | 2018-03-30 | 338 | 495.5d | 0.5d | finish no earlier than 2018-03-30 |  | Development | 672h | 37,800 |
| 340 | 1.4.2.4 | Implementatie & testing |  | 15d | 2018-04-02 | 2018-04-20 | 339 | 495d |  | start no earlier than 2018-03-31 |  | Lead Project Consultant; Technical Consultant | 240h | 21,060 |

Notes:
- 319: Dit zal tegen de voorziene datum in GLOBIS 10 aanwezig zijn.
- 331: Voor de FFW-functionaliteiten zijn Planning, Claims en Crossdoxk niet in scope om dat de vereisten hierover (nog) niet bekend zijn. (verslag Crossroad)
- 333: Hongarije / Oostenrijk / Kiefersfelden / Interzuid / FFW 500 / E-L-C
- 336: investering in GLOBIS of afzonderlijke bestelling?

| ID | WBS | Task | Type | Duration | Start | Finish | Predecessors | Total slack | Free slack | Constraint | Resources | Work | Cost |
| --- | --- | --- | --- | --- | --- | --- | --- | --- | --- | --- | --- | --- | --- |
| 341 | 1.4.3 | **Globsim - Whatif CRM/SRM - 56** |  | 94d | 2018-10-01 | 2018-12-21 |  |  |  |  |  | 320h | 28,980 |
| 342 | 1.4.3.1 | Use Case & data samples delivered: Ewals (& GLOBIS?) |  | 15d | 2018-03-06 | 2018-03-27 | 343SF | 514d |  | start no earlier than 2017-10-19 |  |  |  |
| 343 | 1.4.3.2 | Technical Design |  | 10d | 2018-03-27 | 2018-04-09 |  | 439d | 0d | start no earlier than 2018-03-27 | Technical Analyst | 80h | 7,920 |
| 344 | 1.4.3.3 | Development |  | 50d | 2018-04-13 | 2018-06-22 | 343 | 435.5d | 0.5d | finish no earlier than 2018-06-22 | Development |  |  |
| 345 | 1.4.3.4 | Implementatie & testing |  | 15d | 2018-06-25 | 2018-07-13 | 344 | 435d |  | start no earlier than 2018-06-25 | Lead Project Consultant; Technical Consultant | 240h | 21,060 |
| 346 | 1.4.4 | Delivery of What if functionalities | milestone | 0d | 2018-12-21 | 2018-12-21 | 341 | 320.5d |  | finish no earlier than 2018-12-21 |  |  |  |

Notes:
- 341: investering in GLOBIS of afzonderlijke bestelling?
